# HighLevelTaskPlan-ISO_Datatype2

Schedule from MS Project, 2010-02-18 to 2010-06-17, A marks actual dates.
Personal

## Calendars

- Standard: Mon-Fri 08:00-12:00, 13:00-17:00; Sat-Sun off.

## Resources

| Resource |
| --- |
| SDK |
| caGrid |
| caAdapter |
| QA |
| Documentation |

## Schedule

| ID | WBS | Task | Type | Duration | Start | Finish | Predecessors | Complete | Remaining | Total slack | Free slack | Constraint | Resources | Work | Actual work |
| --- | --- | --- | --- | --- | --- | --- | --- | --- | --- | --- | --- | --- | --- | --- | --- |
| 1 | 1 | **ISO Datatype support** |  | 86d? | 2010-02-18 A | 2010-06-17 |  | 67% | 28.34d? | 0d |  |  |  | 3124.8h | 2552.99h |
| 2 | 1.1 | Kickoff |  | 1d | 2010-03-01 | 2010-03-01 |  |  |  | 59d |  | start no earlier than 2010-03-01 |  |  |  |
| 4 | 1.2 | **Implementation** |  | 65d? | 2010-02-18 A | 2010-05-19 |  | 89% | 6.87d? | 21d |  |  |  | 2364.8h | 2295.82h |
| 5 | 1.2.1 | **ISO 21090 Library** |  | 20d | 2010-03-02 A | 2010-03-29 A |  | 100% |  |  |  |  |  | 480h | 480h |
| 6 | 1.2.1.1 | Analyze COPPA Localized library |  | 5d | 2010-03-02 A | 2010-03-08 A | 2 | 100% |  |  |  | start no earlier than 2010-03-02 | SDK; caGrid | 80h | 80h |
| 7 | 1.2.1.2 | Analyze COPPA serialization framework |  | 5d | 2010-03-02 A | 2010-03-08 A | 2 | 100% |  |  |  | start no earlier than 2010-03-02 | SDK; caGrid | 80h | 80h |
| 8 | 1.2.1.3 | Analyze COPPA OR Mapping framework |  | 5d | 2010-03-02 A | 2010-03-08 A | 2 | 100% |  |  |  | start no earlier than 2010-03-02 | SDK; caGrid | 80h | 80h |
| 9 | 1.2.1.4 | Implement enhancements in datatype library |  | 15d | 2010-03-09 A | 2010-03-29 A | 8 | 100% |  |  |  | start no earlier than 2010-03-09 | SDK; caGrid | 240h | 240h |
| 10 | 1.2.1.5 | Baseline library code | milestone | 0d | 2010-03-29 A | 2010-03-29 A | 9 | 100% |  |  |  | start no earlier than 2010-03-29 |  |  |  |
| 12 | 1.2.2 | **SDK Enhancements** |  | 63d | 2010-02-18 A | 2010-05-17 |  | 96% | 2.46d | 23d |  |  |  | 1024h | 984h |
| 13 | 1.2.2.1 | Document short term and long term goals for the SDK |  | 10d | 2010-02-18 A | 2010-03-03 A |  | 100% |  |  |  | start no earlier than 2010-02-18 | SDK | 80h | 80h |
| 14 | 1.2.2.2 | Create design document for tag value specification |  | 10d | 2010-03-09 A | 2010-03-22 A | 8 | 100% |  |  |  | start no earlier than 2010-03-09 | SDK | 80h | 80h |
| 15 | 1.2.2.3 | Create design document for Hibernate mapping |  | 15d | 2010-03-09 A | 2010-03-29 A | 8 | 100% |  |  |  | start no earlier than 2010-03-09 | SDK | 120h | 120h |
| 16 | 1.2.2.4 | Develop JAXB based serialization framework |  | 15d | 2010-03-09 A | 2010-03-29 A | 8 | 100% |  |  |  | start no earlier than 2010-03-09 | SDK | 120h | 120h |
| 17 | 1.2.2.5 | Create Test UML model |  | 5d | 2010-03-23 A | 2010-03-29 A | 14 | 100% |  |  |  | start no earlier than 2010-03-23 | SDK | 40h | 40h |
| 18 | 1.2.2.6 | Enhance SDK Java code generator for the ISO data types |  | 5d | 2010-03-23 A | 2010-03-29 A | 15FS-5d | 100% |  |  |  | start no earlier than 2010-03-23 | SDK | 40h | 40h |
| 19 | 1.2.2.7 | Enhance SDK ORM module for ISO data types |  | 10d | 2010-03-23 A | 2010-04-05 A | 15FS-5d | 100% |  |  |  | start no earlier than 2010-03-23 | SDK | 80h | 80h |
| 20 | 1.2.2.8 | Enhance SDK service layer to support ISO data types |  | 15d | 2010-03-09 A | 2010-03-29 A | 6 | 100% |  |  |  | start no earlier than 2010-03-09 | SDK | 120h | 120h |
| 21 | 1.2.2.9 | Integrate ISO 21090 library in JAXB serialization |  | 8d | 2010-03-30 A | 2010-04-08 A | 20, 16 | 100% |  |  |  | start no earlier than 2010-03-30 | SDK | 64h | 64h |
| 22 | 1.2.2.10 | Enhance SDK proxy framework for ISO data types |  | 5d | 2010-04-09 A | 2010-04-15 A | 21 | 100% |  |  |  | start no earlier than 2010-04-09 | SDK | 40h | 40h |
| 23 | 1.2.2.11 | Enhance BDA scripts for packaging and deployment |  | 15d | 2010-03-30 A | 2010-04-19 A | 6, 20 | 100% |  |  |  | start no earlier than 2010-03-30 | SDK | 120h | 120h |
| 24 | 1.2.2.12 | Unit test and defect fix |  | 5d | 2010-04-20 A | 2010-04-26 A | 23 | 100% |  |  |  | start no earlier than 2010-04-20 | SDK | 40h | 40h |
| 25 | 1.2.2.13 | Enhance SDK RESTful query translator for ISO data types |  | 10d | 2010-05-04 A | 2010-05-17 | 24 | 50% | 5d | 23d |  | start no earlier than 2010-03-30 | SDK | 80h | 40h |
| 27 | 1.2.3 | **caAdapter Enhancements** |  | 57d | 2010-03-02 A | 2010-05-19 |  | 72% | 15.83d | 21d |  |  |  | 376h | 376h |
| 28 | 1.2.3.1 | Document the short and long term scope of the caAdapter efforts |  | 5d | 2010-03-02 A | 2010-03-08 A | 2 | 100% |  |  |  | start no earlier than 2010-03-02 | caAdapter | 40h | 40h |
| 29 | 1.2.3.2 | Enhance caAdapter to load ISO 21090 information |  | 10d | 2010-03-09 A | 2010-03-22 A | 28 | 100% |  |  |  | start no earlier than 2010-03-09 | caAdapter | 80h | 80h |
| 30 | 1.2.3.3 | Create template model |  | 5d | 2010-03-16 A | 2010-03-22 A | 28 | 100% |  |  |  | start no earlier than 2010-03-16 | caAdapter | 40h | 40h |
| 31 | 1.2.3.4 | Enhance caAdapter Model Mapping Service |  | 17d | 2010-03-23 A | 2010-04-14 A | 30 | 100% |  |  |  | start no earlier than 2010-03-23 | caAdapter | 136h | 136h |
| 32 | 1.2.3.5 | Unit test and defect fix |  | 10d | 2010-04-15 A | 2010-04-28 A | 31 | 100% |  |  |  | start no earlier than 2010-04-15 | caAdapter | 80h | 80h |
| 33 | 1.2.3.6 | caAdapter iteration #2 |  | 5d | 2010-04-29 A | 2010-05-05 A | 32 | 100% |  |  |  |  |  |  |  |
| 34 | 1.2.3.7 | caAdapter iteration #3 |  | 10d | 2010-05-06 | 2010-05-19 | 33 |  |  | 21d |  |  |  |  |  |
| 35 | 1.2.3.8 | caAdapter Documentation |  | 10d | 2010-05-06 | 2010-05-19 | 33 |  |  | 16d | 0d |  |  |  |  |
| 36 | 1.2.3.9 | Deliver baseline caAdapter | milestone | 0d | 2010-05-19 | 2010-05-19 | 35 |  |  | 16d | 0d | start no earlier than 2010-02-18 |  |  |  |
| 38 | 1.2.4 | caGrid_HighLevel_TaskPlan_ISO_Datatype |  | 42.8d? | 2010-03-02 A | 2010-04-29 |  | 90% | 4.35d? | 0d |  |  |  | 404.8h | 375.82h |

| ID | WBS | Task | Type | Duration | Start | Finish | Predecessors | Complete | Remaining | Total slack | Free slack | Constraint | Resources | Work | Actual work |
| --- | --- | --- | --- | --- | --- | --- | --- | --- | --- | --- | --- | --- | --- | --- | --- |
| 40 | 1.2.5 | **SDK/caGrid Integration** |  | 5d | 2010-04-27 A | 2010-05-03 A |  | 100% |  |  |  |  |  | 80h | 80h |
| 41 | 1.2.5.1 | Perform SDK and caGrid Integration |  | 5d | 2010-04-27 A | 2010-05-03 A | 24 | 100% |  |  |  | start no earlier than 2010-04-27 | SDK; caGrid | 80h | 80h |
| 43 | 1.3 | **QA Testing** |  | 39d | 2010-04-20 A | 2010-06-11 |  | 35% | 25.21d | 0d |  |  |  | 344h | 257.18h |
| 44 | 1.3.1 | Prepare test plan |  | 10d | 2010-04-20 A | 2010-05-03 | 41SS-5d | 75% | 2.5d | 1d | 0d | start no earlier than 2010-04-20 | QA; SDK; caGrid | 240h | 180h |
| 45 | 1.3.2 | **Execute test cases iteration #1** |  | 13d | 2010-05-04 A | 2010-05-20 | 44, 41 | 74% | 3.35d | 0d |  |  | QA | 104h | 77.18h |
| 46 | 1.3.2.1 | SDK #1 |  | 10d | 2010-05-04 A | 2010-05-17 | 44, 41 | 80% | 2d | 3d |  |  |  |  |  |
| 47 | 1.3.2.2 | caAdapter #2 |  | 5d | 2010-05-04 A | 2010-05-10 A | 44, 41 | 100% |  |  |  |  |  |  |  |
| 48 | 1.3.2.3 | caGRID AS #1 |  | 10d | 2010-05-04 A | 2010-05-17 A | 44, 41 | 100% |  |  |  |  |  |  |  |
| 49 | 1.3.2.4 | caGRID DS #1 |  | 13d | 2010-05-04 A | 2010-05-20 | 44, 41 | 40% | 7.8d | 0d |  |  |  |  |  |
| 50 | 1.3.3 | **Exceute test cases iteration #2** |  | 8d | 2010-05-21 | 2010-06-01 | 49 |  |  | 0d |  |  |  |  |  |
| 51 | 1.3.3.1 | SDK #2 |  | 8d | 2010-05-21 | 2010-06-01 | 46 |  |  | 0d |  |  |  |  |  |
| 52 | 1.3.3.2 | caAdapter #3 |  | 5d | 2010-05-21 | 2010-05-27 | 47 |  |  | 11d |  |  |  |  |  |
| 53 | 1.3.3.3 | caGRID AS #2 |  | 8d | 2010-05-21 | 2010-06-01 | 48 |  |  | 0d |  |  |  |  |  |
| 54 | 1.3.3.4 | caGRID DS #2 |  | 8d | 2010-05-21 | 2010-06-01 | 49 |  |  | 0d |  |  |  |  |  |
| 55 | 1.3.4 | **Execute test cases iteration #3** |  | 8d | 2010-06-02 | 2010-06-11 |  |  |  | 0d |  |  |  |  |  |
| 56 | 1.3.4.1 | SDK #3 |  | 8d | 2010-06-02 | 2010-06-11 | 51 |  |  | 0d |  |  |  |  |  |
| 57 | 1.3.4.2 | caGRID AS #3 |  | 8d | 2010-06-02 | 2010-06-11 | 53 |  |  | 0d |  |  |  |  |  |
| 58 | 1.3.4.3 | caGRID DS #3 |  | 8d | 2010-06-02 | 2010-06-11 | 54 |  |  | 0d |  |  |  |  |  |
| 60 | 1.4 | **User Documentation** |  | 34d | 2010-04-09 A | 2010-05-26 |  |  | 34d | 16d |  |  |  | 320h |  |
| 61 | 1.4.1 | Start | milestone | 0d | 2010-04-09 A | 2010-04-09 A |  | 100% |  |  |  |  |  |  |  |
| 62 | 1.4.2 | **Non-Product Specific Guides** |  | 5d | 2010-04-09 | 2010-04-15 |  |  |  | 41d |  |  |  | 120h |  |
| 63 | 1.4.2.1 | ISO Common Project Overview |  | 5d | 2010-04-09 | 2010-04-15 | 61 |  |  | 41d | 29d |  | Documentation | 40h |  |
| 64 | 1.4.2.2 | Example Use Cases/Work Flows |  | 5d | 2010-04-09 | 2010-04-15 | 61 |  |  | 45d | 29d |  | Documentation | 40h |  |
| 65 | 1.4.2.3 | UML Modeling Guide |  | 5d | 2010-04-09 | 2010-04-15 | 61 |  |  | 45d | 29d |  | Documentation | 40h |  |

| ID | WBS | Task | Type | Duration | Start | Finish | Predecessors | Total slack | Free slack | Constraint | Resources | Work |
| --- | --- | --- | --- | --- | --- | --- | --- | --- | --- | --- | --- | --- |
| 66 | 1.4.3 | **Product Specific Guides** |  | 22d | 2010-04-27 | 2010-05-26 |  | 16d |  |  |  | 200h |
| 67 | 1.4.3.1 | caAdapter |  | 5d | 2010-05-20 | 2010-05-26 | 36 | 16d | 0d |  | caAdapter | 40h |
| 68 | 1.4.3.2 | SDK Workbench |  | 5d | 2010-04-27 | 2010-05-03 | 24 | 33d | 17d |  | SDK | 40h |
| 69 | 1.4.3.3 | SDK Programmers Guide |  | 5d | 2010-04-27 | 2010-05-03 | 24 | 33d | 17d |  | SDK | 40h |
| 70 | 1.4.3.4 | caGrid Analytical Service Tutorial |  | 5d | 2010-04-29 | 2010-05-06 | 38 | 30.2d | 14.2d |  | caGrid | 40h |
| 71 | 1.4.3.5 | caGrid Data Service Tutorial |  | 5d | 2010-04-29 | 2010-05-06 | 38 | 30.2d | 14.2d |  | caGrid | 40h |
| 72 | 1.4.4 | Finish | milestone | 0d | 2010-05-26 | 2010-05-26 | 63, 64, 65, 67, 68, 69, 70, 71 | 16d |  |  |  |  |
| 74 | 1.5 | **Transition** |  | 4d | 2010-06-14 | 2010-06-17 |  | 0d |  |  |  | 96h |
| 75 | 1.5.1 | Prepare release notes, zope sites |  | 2d | 2010-06-14 | 2010-06-15 | 63, 43 | 0d |  | start no earlier than 2010-05-18 | SDK; caGrid; caAdapter | 48h |
| 76 | 1.5.2 | Upload artifacts on the public sites |  | 2d | 2010-06-16 | 2010-06-17 | 75 | 0d |  | start no earlier than 2010-05-20 | SDK; caGrid; caAdapter | 48h |
